# IPO

Schedule from MS Project, 2021-05-01 to 2022-03-01, A marks actual dates.

## Calendars

- Standard: Mon-Fri 08:00-12:00, 13:00-17:00; Sat-Sun off.

## Resources

| Resource |
| --- |
| أحمد حمود |
| مالية |
| المشتريات |
| التسويق |
| الاستأجار |
| الشيخ يحي |
| علاء |
| عبد اللطيف |
| ياسر |
| مستشار العناية المهنية القانونية |
| المستشار المالي - PWC |
| لجنة المراجعة الداخلية |
| صابر |
| الشيخ عمر |
| الشيخ ابراهيم |
| الشيخ عبد الله |
| المراجعة الداخلية |
| المستشار القانوني |
| مستشار الاكتتاب |
| إبراهيم العمارات |
| مراد |
| حسني |
| مراجع خارجي - KPMG |
| سامي |
| حسام مبارك |

## Schedule

| ID | WBS | Task | Type | Duration | Start | Finish | Complete | Remaining | Total slack | Resources | Work | Actual work | Period |
| --- | --- | --- | --- | --- | --- | --- | --- | --- | --- | --- | --- | --- | --- |
| 1 | 1 | **IPO** |  | 217d | 2021-05-01 A | 2022-03-01 | 15% | 184.04d | 0d |  | 66264h | 10004.8h |  |
| 2 | 1.1 | **المتطلبات القانونية** |  | 118d | 2021-09-17 A | 2022-03-01 | 1% | 117.28d | 0d |  | 26872h | 168h |  |
| 3 | 1.1.1 | **تدوين تاريخ الشركة منذ التأسيس وحتي الان وحصر السجلات التجارية لكل فترة تغير** |  | 7d | 2021-09-17 A | 2021-09-27 A | 100% |  |  |  | 168h | 168h |  |
| 4 | 1.1.1.1 | عقد التأسيس | manual | 7d | 2021-09-17 A | 2021-09-27 A | 100% |  |  | أحمد حمود | 56h | 56h | HY |
| 5 | 1.1.1.2 | النظام الأساسي | manual | 7d | 2021-09-17 A | 2021-09-27 A | 100% |  |  | أحمد حمود | 56h | 56h |  |
| 6 | 1.1.1.3 | السجلات التجارية | manual | 7d | 2021-09-17 A | 2021-09-27 A | 100% |  |  | أحمد حمود | 56h | 56h |  |
| 7 | 1.1.2 | **مراجعة وحصر وتسجيل الملكية الفكرية محليا ودوليا** |  | 12d | 2021-09-17 | 2021-10-04 |  |  | 0d |  | 488h |  |  |
| 8 | 1.1.2.1 | النماذج الصناعية للمنتجات |  | 12d | 2021-09-17 | 2021-10-04 |  |  | 106d | مراد | 96h |  |  |
| 9 | 1.1.2.2 | النماذج الصناعية لديكورات |  | 12d | 2021-09-17 | 2021-10-04 |  |  | 106d | مراد | 96h |  |  |
| 10 | 1.1.2.3 | العلامات التجارية | manual | 12d | 2021-09-19 | 2021-10-04 |  |  |  | مراد | 96h |  |  |
| 11 | 1.1.2.4 | الأسماء التجارية | manual | 12d | 2021-09-19 | 2021-10-04 |  |  |  | مراد | 96h |  |  |
| 12 | 1.1.2.5 | الهوية - الرؤساء التنفيذين وعائلاتهم جميعاً- اعضاء مجلس الادارة | manual | 12d | 2021-09-19 | 2021-10-04 |  |  |  | مراد | 96h |  |  |
| 13 | 1.1.2.6 | قييم ورؤية ورسالة درعة | manual | 1d | 2021-09-17 | 2021-09-17 |  |  |  | حسام مبارك | 8h |  |  |
| 14 | 1.1.3 | **مراجعة إتفاقيات وعقود** |  | 76d | 2021-09-17 | 2021-12-31 |  |  | 42d |  | 3040h |  |  |
| 15 | 1.1.3.1 | اطراف ذوي علاقة |  | 76d | 2021-09-17 | 2021-12-31 |  |  | 42d | ياسر | 608h |  |  |
| 16 | 1.1.3.2 | موردين منتجات |  | 76d | 2021-09-17 | 2021-12-31 |  |  | 42d | المشتريات | 608h |  |  |
| 17 | 1.1.3.3 | خدمات العملاء |  | 76d | 2021-09-17 | 2021-12-31 |  |  | 42d | التسويق | 608h |  |  |
| 18 | 1.1.3.4 | لايجارات |  | 76d | 2021-09-17 | 2021-12-31 |  |  | 42d | الاستأجار | 608h |  |  |
| 19 | 1.1.3.5 | الموظفين |  | 76d | 2021-09-17 | 2021-12-31 |  |  | 42d | الشيخ يحي | 608h |  |  |
| 20 | 1.1.4 | **مراجعة** |  | 76d | 2021-09-17 | 2021-12-31 |  |  | 0d |  | 1472h |  |  |
| 21 | 1.1.4.1 | القروض |  | 76d | 2021-09-17 | 2021-12-31 |  |  | 42d |  |  |  |  |
| 22 | 1.1.4.2 | الاتفاقيات البنكية |  | 76d | 2021-09-17 | 2021-12-31 |  |  | 42d | أحمد حمود | 608h |  |  |
| 23 | 1.1.4.3 | نقاط البيع | manual | 32d | 2021-09-17 | 2021-10-31 |  |  |  | أحمد حمود | 256h |  |  |
| 24 | 1.1.4.4 | اتفاقية الرواتب |  | 76d | 2021-09-17 | 2021-12-31 |  |  | 42d | أحمد حمود | 608h |  |  |

| ID | WBS | Task | Duration | Start | Finish | Total slack | Constraint | Resources | Work |
| --- | --- | --- | --- | --- | --- | --- | --- | --- | --- |
| 25 | 1.1.5 | **فحص كل التسهيلات البنكية القائمة والمضمونة** | 76d | 2021-09-17 | 2021-12-31 | 42d |  |  | 1216h |
| 26 | 1.1.5.1 | برهن | 76d | 2021-09-17 | 2021-12-31 | 42d |  | أحمد حمود | 608h |
| 27 | 1.1.5.2 | إقرار | 76d | 2021-09-17 | 2021-12-31 | 42d |  | أحمد حمود | 608h |
| 28 | 1.1.6 | **جمع و حصر ومراجعة المعلومات القانونية و القضايا والالتزامات المحتملة** | 76d | 2021-09-17 | 2021-12-31 | 42d |  |  | 3040h |
| 29 | 1.1.6.1 | إقرارات | 76d | 2021-09-17 | 2021-12-31 | 42d |  | أحمد حمود | 608h |
| 30 | 1.1.6.2 | قضايا | 76d | 2021-09-17 | 2021-12-31 | 42d |  | أحمد حمود | 608h |
| 31 | 1.1.6.3 | عقود | 76d | 2021-09-17 | 2021-12-31 | 42d |  | أحمد حمود | 608h |
| 32 | 1.1.6.4 | مطالبات | 76d | 2021-09-17 | 2021-12-31 | 42d |  | أحمد حمود | 608h |
| 33 | 1.1.6.5 | تأمين | 76d | 2021-09-17 | 2021-12-31 | 42d |  | أحمد حمود | 608h |
| 34 | 1.1.7 | إعداد مصفوفة الأمتثال والالتزام و العمل عليها | 76d | 2021-09-17 | 2021-12-31 | 42d |  | أحمد حمود | 608h |
| 35 | 1.1.8 | **بناء النظام المتكامل للأنظمة - كل ما يتعلق بالشركة (مصفوفة الأنظمة)** | 118d | 2021-09-17 | 2022-03-01 | 0d |  |  | 2568h |
| 36 | 1.1.8.1 | ISO 9001 | 53d | 2021-09-17 | 2021-11-30 | 65d |  | علاء | 424h |
| 37 | 1.1.8.2 | ISO 10002 | 32d | 2021-09-17 | 2021-11-01 | 86d |  | علاء | 256h |
| 38 | 1.1.8.3 | ISO 14001 | 118d | 2021-09-17 | 2022-03-01 | 0d |  | علاء | 944h |
| 39 | 1.1.8.4 | ISO 45001 | 118d | 2021-09-17 | 2022-03-01 | 0d |  | علاء | 944h |
| 40 | 1.1.9 | **حصر بوليصات التأمين** | 76d | 2021-09-17 | 2021-12-31 | 42d |  |  | 2432h |
| 41 | 1.1.9.1 | المعارض | 76d | 2021-09-17 | 2021-12-31 | 42d | finish no earlier than 2021-12-31 | أحمد حمود | 608h |
| 42 | 1.1.9.2 | السيارات | 76d | 2021-09-17 | 2021-12-31 | 42d | start no earlier than 2021-09-17 | أحمد حمود | 608h |
| 43 | 1.1.9.3 | البضائع | 76d | 2021-09-17 | 2021-12-31 | 42d | start no earlier than 2021-09-17 | أحمد حمود | 608h |
| 44 | 1.1.9.4 | التأمين الطبي | 76d | 2021-09-17 | 2021-12-31 | 42d | start no earlier than 2021-09-17 | أحمد حمود | 608h |
| 45 | 1.1.10 | **حصر و مراجعة مع توضيح صلاحيات كل شخص** | 76d | 2021-09-17 | 2021-12-31 | 42d |  |  | 1216h |
| 46 | 1.1.10.1 | الوكالات الشرعية | 76d | 2021-09-17 | 2021-12-31 | 42d | finish no earlier than 2021-12-31 | أحمد حمود | 608h |
| 47 | 1.1.10.2 | التفاويض الرسمية | 76d | 2021-09-17 | 2021-12-31 | 42d | finish no earlier than 2021-12-31 | أحمد حمود | 608h |
| 48 | 1.1.11 | **ادخال نظام** | 76d | 2021-09-17 | 2021-12-31 | 42d |  |  | 1824h |
| 49 | 1.1.11.1 | الاعتمادات المستندية | 76d | 2021-09-17 | 2021-12-31 | 42d |  | عبد اللطيف | 608h |
| 50 | 1.1.11.2 | الضمانات البنكية | 76d | 2021-09-17 | 2021-12-31 | 42d |  | عبد اللطيف | 608h |
| 51 | 1.1.11.3 | التأمين على البضاعة في الطريق | 76d | 2021-09-17 | 2021-12-31 | 42d |  | عبد اللطيف | 608h |

| ID | WBS | Task | Type | Duration | Start | Finish | Total slack | Resources | Work | Period |
| --- | --- | --- | --- | --- | --- | --- | --- | --- | --- | --- |
| 52 | 1.1.12 | **حصر و مراجعة جميع الصادرة من الجهات الحكومية** |  | 76d | 2021-09-17 | 2021-12-31 | 42d |  | 1824h |  |
| 53 | 1.1.12.1 | التصاريح |  | 76d | 2021-09-17 | 2021-12-31 | 42d | الشيخ يحي | 608h |  |
| 54 | 1.1.12.2 | الرخص |  | 76d | 2021-09-17 | 2021-12-31 | 42d | الشيخ يحي | 608h |  |
| 55 | 1.1.12.3 | التفويضات |  | 76d | 2021-09-17 | 2021-12-31 | 42d | الشيخ يحي | 608h |  |
| 56 | 1.1.13 | حصر جميع الانتساب واشتراكات الغرف التجارية والهيئات (هيئة الترقيم الدولي...) |  | 76d | 2021-09-17 | 2021-12-31 | 42d | الشيخ يحي | 608h |  |
| 57 | 1.1.14 | **التأكد من حفظ جميع لعشر سنوات ماضية** |  | 76d | 2021-09-17 | 2021-12-31 | 0d |  | 4256h |  |
| 58 | 1.1.14.1 | الوثائق والمستندات |  | 76d | 2021-09-17 | 2021-12-31 | 42d | حسني | 608h |  |
| 59 | 1.1.14.2 | المحاضر |  | 76d | 2021-09-17 | 2021-12-31 | 42d | حسني | 608h |  |
| 60 | 1.1.14.3 | التقارير |  | 76d | 2021-09-17 | 2021-12-31 | 42d | حسني | 608h |  |
| 61 | 1.1.14.4 | جمعية المساهمين | manual | 76d | 2021-09-17 | 2021-12-31 |  | حسني | 608h | HY |
| 62 | 1.1.14.5 | تقرير مجلس الإدارة |  | 76d | 2021-09-17 | 2021-12-31 | 42d | حسني | 608h |  |
| 63 | 1.1.14.6 | لجنة المراجعة |  | 76d | 2021-09-17 | 2021-12-31 | 42d | حسني | 608h |  |
| 64 | 1.1.14.7 | جميع القضايا |  | 76d | 2021-09-17 | 2021-12-31 | 42d | حسني | 608h |  |
| 65 | 1.1.15 | **حصر جميع وثائق التملك للأصول والخدمات** |  | 76d | 2021-09-17 | 2021-12-31 | 0d |  | 1880h |  |
| 66 | 1.1.15.1 | الزكاة |  | 76d | 2021-09-17 | 2021-12-31 | 42d | ياسر | 608h |  |
| 67 | 1.1.15.2 | الضريبة | manual | 76d | 2021-09-17 | 2021-12-31 |  | ياسر | 608h |  |
| 68 | 1.1.15.3 | التوطين. | manual | 76d | 2021-09-17 | 2021-12-31 |  | الشيخ يحي | 608h |  |
| 69 | 1.1.15.4 | محاضر الجمعيات العمومية |  | 7d | 2021-09-17 | 2021-09-27 | 111d | أحمد حمود | 56h |  |
| 70 | 1.1.16 | التأكد بأن جميع تراخيص الشركة مربوطه بأسم الشركة |  | 7d | 2021-09-17 | 2021-09-27 | 111d | أحمد حمود | 56h |  |
| 71 | 1.1.17 | **حصر جميع وثائق التملك للأصول والخدمات** |  | 7d | 2021-09-17 | 2021-09-27 | 111d |  | 168h |  |
| 72 | 1.1.17.1 | برامج |  | 7d | 2021-09-17 | 2021-09-27 | 111d | أحمد حمود | 56h |  |
| 73 | 1.1.17.2 | صكوك |  | 7d | 2021-09-17 | 2021-09-27 | 111d | أحمد حمود | 56h |  |
| 74 | 1.1.17.3 | سيارات |  | 7d | 2021-09-17 | 2021-09-27 | 111d | أحمد حمود | 56h |  |
| 75 | 1.1.18 | اعداد فحص العناية المهنية القانونية | manual | 1d | 2021-09-17 | 2021-09-17 |  | مستشار العناية المهنية القانونية | 8h |  |

| ID | WBS | Task | Duration | Start | Finish | Complete | Remaining | Total slack | Constraint | Resources | Work | Actual work | Period |
| --- | --- | --- | --- | --- | --- | --- | --- | --- | --- | --- | --- | --- | --- |
| 76 | 1.2 | **المتطلبات المالية ولجنة التحول** | 121d | 2021-07-16 A | 2021-12-31 | 8% | 111.79d | 42d |  |  | 19408h | 1912h |  |
| 77 | 1.2.1 | **إعداد كل الشركات التابعة من** | 76d | 2021-09-17 | 2021-12-31 |  |  | 42d |  |  | 2432h |  |  |
| 78 | 1.2.1.1 | سجلات تجارية | 76d | 2021-09-17 | 2021-12-31 |  |  | 42d |  | أحمد حمود | 608h |  |  |
| 79 | 1.2.1.2 | قوائم مالية | 76d | 2021-09-17 | 2021-12-31 |  |  | 42d |  | عبد اللطيف | 608h |  |  |
| 80 | 1.2.1.3 | مجالس إدارة | 76d | 2021-09-17 | 2021-12-31 |  |  | 42d |  | عبد اللطيف | 608h |  |  |
| 81 | 1.2.1.4 | جمعيات مساهمين | 76d | 2021-09-17 | 2021-12-31 |  |  | 42d |  | عبد اللطيف | 608h |  | HY |
| 82 | 1.2.2 | **هيكل تنظيمي اختيار النموذج الأمثل** | 1d | 2021-09-17 A | 2021-09-17 A | 100% |  |  |  |  | 8h | 8h |  |
| 83 | 1.2.2.1 | للشركة | 1d | 2021-09-17 A | 2021-09-17 A | 100% |  |  |  | عبد اللطيف | 8h | 8h |  |
| 84 | 1.2.3 | **هيكل مالي واختيار النموذج الأمثل** | 76d | 2021-09-17 A | 2021-12-31 | 50% | 38d | 42d |  |  | 1216h | 608h |  |
| 85 | 1.2.3.1 | للشركة | 76d | 2021-09-17 A | 2021-12-31 | 50% | 38d | 42d |  | عبد اللطيف; إبراهيم العمارات | 1216h | 608h |  |
| 86 | 1.2.4 | اعداد فحص العناية المهنية المالية | 1d | 2021-09-17 | 2021-09-17 |  |  | 117d |  | المستشار المالي - PWC | 8h |  |  |
| 87 | 1.2.5 | **أعداد الإدارة المالية** | 121d | 2021-07-16 | 2021-12-31 |  |  | 42d |  |  | 3648h |  |  |
| 88 | 1.2.5.1 | لقفل جميع الحسابات ثاني يوم من الإقفال | 76d | 2021-07-16 | 2021-10-29 |  |  | 87d | finish no earlier than 2021-10-29 | عبد اللطيف; ياسر | 1216h |  |  |
| 89 | 1.2.5.2 | إصدار القوائم المالية الفحص الاولي خلال خمسة أيام من الإقفال | 76d | 2021-09-17 | 2021-12-31 |  |  | 42d |  | عبد اللطيف; ياسر | 1216h |  |  |
| 90 | 1.2.5.3 | إصدار القوائم المالية المدققة خلال خمسة أيام من الإقفال | 76d | 2021-09-17 | 2021-12-31 |  |  | 42d | finish no earlier than 2021-12-31 | عبد اللطيف; ياسر | 1216h |  |  |
| 91 | 1.2.6 | التأكد من عدم وجود أي تحفظ من المراجع الخارجي علي القوائم المالية الموحدة للشركة ولفترة ثلاث سنوات قبل تقديم طلب التسجيل | 76d | 2021-09-17 | 2021-12-31 |  |  | 42d |  | لجنة المراجعة الداخلية | 608h |  |  |
| 92 | 1.2.7 | تأهيل نظام الموارد البشرية لاقفال جميع معاملاتها في اليوم الثاني من نهاية الفترة المالية | 76d | 2021-09-17 | 2021-12-31 |  |  | 42d |  | الشيخ يحي | 608h |  |  |
| 93 | 1.2.8 | إعداد الموازنة السنوية للشركة حسب متطلبات العناية المهنية المالية | 7d | 2021-09-17 A | 2021-09-27 A | 100% |  |  |  | صابر | 56h | 56h |  |
| 94 | 1.2.9 | تطبيق المعايير المالية الدولية - IFRS | 76d | 2021-09-17 | 2021-12-31 |  |  | 42d |  | عبد اللطيف; ياسر | 1216h |  |  |
| 95 | 1.2.10 | اعداد دليل المعايير المالية الدولية- IFRS | 76d | 2021-09-17 | 2021-12-31 |  |  | 42d |  | عبد اللطيف; ياسر | 1216h |  |  |
| 96 | 1.2.11 | حصص المساهمين -الشركاء في كافة الشركة -اختيار النموذج الأمثل | 1d | 2021-09-17 | 2021-09-17 |  |  | 117d |  | الشيخ عمر; الشيخ ابراهيم; الشيخ عبد الله | 24h |  |  |
| 97 | 1.2.12 | **اعداد السياسات والإجراءات** | 1d | 2021-09-17 | 2021-09-17 |  |  | 117d |  |  | 24h |  |  |
| 98 | 1.2.12.1 | الإدارة المالية | 1d | 2021-09-17 | 2021-09-17 |  |  | 117d |  | مراجع خارجي - KPMG | 8h |  |  |
| 99 | 1.2.12.2 | الموارد البشرية | 1d | 2021-09-17 | 2021-09-17 |  |  | 117d |  | مراجع خارجي - KPMG | 8h |  |  |
| 100 | 1.2.12.3 | تقنية المعلومات | 1d | 2021-09-17 | 2021-09-17 |  |  | 117d |  | مراجع خارجي - KPMG | 8h |  |  |
| 101 | 1.2.13 | الأنظمة الرقابية المالية | 76d | 2021-09-17 | 2021-12-31 |  |  | 42d |  | المراجعة الداخلية | 608h |  |  |
| 102 | 1.2.14 | إعداد نشرة الأصدار الداخلية | 1d | 2021-09-17 | 2021-09-17 |  |  | 117d |  | المستشار القانوني | 8h |  |  |
| 103 | 1.2.15 | التقييم المالي للشركة و تحديد الفجوات (القيمة السوقية) | 1d | 2021-09-17 | 2021-09-17 |  |  | 117d |  | مستشار الاكتتاب | 8h |  |  |
| 104 | 1.2.16 | اعداد الموازنات للخطة الاستراتيجية (البدجت) | 1d | 2021-09-17 A | 2021-09-17 A | 100% |  |  |  | صابر | 8h | 8h |  |
| 105 | 1.2.17 | تحديد متطلبات هيئة سوق المال وتداول للميزانيات والبيانات المالية | 76d | 2021-09-17 | 2021-12-31 |  |  | 42d |  | عبد اللطيف | 608h |  |  |
| 106 | 1.2.18 | تنظيف الميزانيات | 76d | 2021-09-17 A | 2021-12-31 A | 100% |  |  |  | عبد اللطيف; ياسر | 1232h | 1232h |  |
| 107 | 1.2.19 | إعداد خطة لإستثمار النقد | 1d | 2021-09-17 | 2021-09-17 |  |  | 117d |  | عبد اللطيف | 8h |  |  |
| 108 | 1.2.20 | إعداد خطة لموارد الشركة الأخرى لرفع قيمة الشركة | 1d | 2021-09-17 | 2021-09-17 |  |  | 117d |  | عبد اللطيف | 8h |  |  |
| 109 | 1.2.21 | إعداد خطة سعر السهم في الإكتتاب | 1d | 2021-09-17 | 2021-09-17 |  |  | 117d |  | عبد اللطيف | 8h |  |  |
| 110 | 1.2.22 | تفاصيل عن الأصول الثابتة المهمة التي مزمع شراؤها او استئجارها | 76d | 2021-09-17 | 2021-12-31 |  |  | 42d |  | صابر | 608h |  |  |
| 111 | 1.2.23 | اصدار ميزانيات ربعية أولية لثلاث سنوات ماضية | 76d | 2021-09-17 | 2021-12-31 |  |  | 42d | finish no earlier than 2021-12-31 | عبد اللطيف; ياسر | 1216h |  |  |
| 112 | 1.2.24 | اصدار ميزانيات مدققة لاخر ثلاث سنوات (محسنة) | 76d | 2021-09-17 | 2021-12-31 |  |  | 42d |  | عبد اللطيف; ياسر | 1216h |  |  |

Notes:
- 88: يتم اعدادها ربع سنوي لاعوام 2020 الى 2022
- 111: ابتداء من 01-01-2021

| ID | WBS | Task | Duration | Start | Finish | Predecessors | Complete | Remaining | Total slack | Free slack | Constraint | Resources | Work | Actual work |
| --- | --- | --- | --- | --- | --- | --- | --- | --- | --- | --- | --- | --- | --- | --- |
| 113 | 1.2.25 | **حل التداخلات بين الشركات الشقيقة** | 76d | 2021-09-17 | 2021-12-31 |  |  |  | 42d |  |  |  | 1824h |  |
| 114 | 1.2.25.1 | مالية | 76d | 2021-09-17 | 2021-12-31 |  |  |  | 42d |  |  | ياسر | 608h |  |
| 115 | 1.2.25.2 | موظفين | 76d | 2021-09-17 | 2021-12-31 |  |  |  | 42d |  |  | الشيخ يحي; سامي | 1216h |  |
| 116 | 1.2.26 | التصنيف الأئتماني | 1d | 2021-09-17 | 2021-09-17 |  |  |  | 117d |  |  | الشيخ ابراهيم; الشيخ عمر; عبد اللطيف | 24h |  |
| 117 | 1.2.27 | **مشروع إعداد مصفوفة الصلاحيات** | 76d | 2021-09-17 | 2021-12-31 |  |  |  | 42d |  |  |  | 960h |  |
| 118 | 1.2.27.1 | مشروع التحليل الوظيفي كامل | 32d | 2021-09-17 | 2021-11-01 |  |  |  | 42d | 0d |  | إبراهيم العمارات | 256h |  |
| 119 | 1.2.27.2 | مشروع إعداد مصفوفة تفويض الصلاحيات | 44d | 2021-11-02 | 2021-12-31 | 118 |  |  | 42d |  |  | إبراهيم العمارات; عبد اللطيف | 704h |  |
| 120 | 1.3 | **متطلبات الحوكمة** | 216d | 2021-05-01 A | 2022-02-28 |  | 41% | 127.58d | 1d |  |  |  | 19984h | 7924.8h |
| 121 | 1.3.1 | **هيكل تنظيمي** | 100d | 2021-05-01 A | 2021-09-19 A |  | 100% |  |  |  |  |  | 3264h | 3264h |
| 122 | 1.3.1.1 | مجلس الإدارة | 102d | 2021-05-01 A | 2021-09-19 A |  | 100% |  |  |  |  | عبد اللطيف | 816h | 816h |
| 123 | 1.3.1.2 | لجنة المراجعة | 102d | 2021-05-01 A | 2021-09-19 A |  | 100% |  |  |  |  | عبد اللطيف | 816h | 816h |
| 124 | 1.3.1.3 | لجنة المكافآت والترشيحات | 102d | 2021-05-01 A | 2021-09-19 A |  | 100% |  |  |  |  | عبد اللطيف | 816h | 816h |
| 125 | 1.3.1.4 | اللجنة التنفيذية | 102d | 2021-05-01 A | 2021-09-19 A |  | 100% |  |  |  |  | عبد اللطيف | 816h | 816h |
| 126 | 1.3.2 | **إعداد لائحة** | 152d | 2021-05-01 A | 2021-11-30 |  | 78% | 33.29d | 65d |  |  |  | 2904h | 2268h |
| 127 | 1.3.2.1 | لجنة المراجعة | 102d | 2021-05-01 A | 2021-09-19 A |  | 100% |  |  |  |  | المراجعة الداخلية | 816h | 816h |
| 128 | 1.3.2.2 | المراجعة الداخلية | 102d | 2021-05-01 A | 2021-09-19 A |  | 100% |  |  |  |  | المراجعة الداخلية | 816h | 816h |
| 129 | 1.3.2.3 | المكافآت والترشيحات | 53d | 2021-09-19 A | 2021-11-30 |  | 50% | 26.5d | 65d |  |  | عبد اللطيف | 424h | 212h |
| 130 | 1.3.2.4 | اللجنة التنفيذية | 53d | 2021-09-19 A | 2021-11-30 |  | 50% | 26.5d | 65d |  |  | عبد اللطيف | 424h | 212h |
| 131 | 1.3.2.5 | لجنة المواد | 53d | 2021-09-19 A | 2021-11-30 |  | 50% | 26.5d | 65d |  |  | عبد اللطيف | 424h | 212h |
| 132 | 1.3.3 | **إعداد تقارير حسب متطلبات سوق المال** | 53d | 2021-09-17 | 2021-11-30 |  |  |  | 65d |  |  |  | 848h |  |
| 133 | 1.3.3.1 | مجلس الإدارة | 53d | 2021-09-17 | 2021-11-30 |  |  |  | 65d |  | finish no earlier than 2021-11-30 | عبد اللطيف | 424h |  |
| 134 | 1.3.3.2 | لجنة المراجعة | 53d | 2021-09-17 | 2021-11-30 |  |  |  | 65d |  |  | عبد اللطيف | 424h |  |
| 135 | 1.3.4 | **إعداد محضر اجتماعات حسب متطلبات سوق المال** | 53d | 2021-09-17 | 2021-11-30 |  |  |  | 65d |  |  |  | 1696h |  |
| 136 | 1.3.4.1 | مجلس الإدارة | 53d | 2021-09-17 | 2021-11-30 |  |  |  | 65d |  | finish no earlier than 2021-11-30 | عبد اللطيف | 424h |  |
| 137 | 1.3.4.2 | لجنة المراجعة | 53d | 2021-09-17 | 2021-11-30 |  |  |  | 65d |  |  | عبد اللطيف | 424h |  |
| 138 | 1.3.4.3 | جمعية المساهمين | 53d | 2021-09-17 | 2021-11-30 |  |  |  | 65d |  |  | عبد اللطيف | 424h |  |
| 139 | 1.3.4.4 | اللجنة التنفيذية | 53d | 2021-09-17 | 2021-11-30 |  |  |  | 65d |  |  | عبد اللطيف | 424h |  |
| 140 | 1.3.5 | إعداد سجل المساهمين وإصدار شهادات اسهم | 1d | 2021-09-17 | 2021-09-17 |  |  |  | 117d |  |  | الشيخ عمر; عبد اللطيف | 16h |  |

| ID | WBS | Task | Duration | Start | Finish | Complete | Remaining | Total slack | Constraint | Resources | Work | Actual work |
| --- | --- | --- | --- | --- | --- | --- | --- | --- | --- | --- | --- | --- |
| 141 | 1.3.6 | **تعديل النظام الأساسي للشركة بما يتوافق مع نظام الشركات و لائحة الحوكمة** | 216d | 2021-05-01 A | 2022-02-28 | 46% | 117.16d | 1d |  |  | 3624h | 1658.4h |
| 142 | 1.3.6.1 | اعداد لائحة | 102d | 2021-05-01 A | 2021-09-19 A | 100% |  |  |  | عبد اللطيف | 816h | 816h |
| 143 | 1.3.6.2 | توزيع الأرباح | 117d | 2021-09-19 A | 2022-02-28 | 20% | 93.6d | 1d |  | عبد اللطيف | 936h | 187.2h |
| 144 | 1.3.6.3 | تعارض المصالح | 117d | 2021-09-19 A | 2022-02-28 | 20% | 93.6d | 1d |  | عبد اللطيف | 936h | 187.2h |
| 145 | 1.3.6.4 | مجلس الإدارة | 117d | 2021-09-19 A | 2022-02-28 | 50% | 58.5d | 1d |  | عبد اللطيف | 936h | 468h |
| 146 | 1.3.7 | مراجعة لوائح وسياسات هيئة سوق المال وتداول والعمل على تنفيذها | 53d | 2021-09-17 | 2021-11-30 |  |  | 65d |  | مراد | 424h |  |
| 147 | 1.3.8 | أعادة تشكيل مجلس الإدارة بما يتوافق مع لائحة الحوكمة و السوق المالي | 76d | 2021-09-17 A | 2021-12-31 |  | 76d | 42d |  | عبد اللطيف | 608h |  |
| 148 | 1.3.9 | تأسيس لجنة المراجعة | 102d | 2021-05-01 A | 2021-09-20 | 90% | 10.2d | 116d |  | عبد اللطيف | 816h | 734.4h |
| 149 | 1.3.10 | تأسيس لجنة الترشيحات والمكافات | 11d | 2021-09-17 | 2021-10-01 |  |  | 107d |  | الشيخ ابراهيم; عبد اللطيف | 176h |  |
| 150 | 1.3.11 | تأسيس اللجنة التنفيذية | 11d | 2021-09-17 | 2021-10-01 |  |  | 107d |  | الشيخ ابراهيم; عبد اللطيف | 176h |  |
| 151 | 1.3.12 | تعين امين سر مجلس الإدارة | 22d | 2021-09-17 | 2021-10-18 |  |  | 96d |  | الشيخ ابراهيم; عبد اللطيف | 352h |  |
| 152 | 1.3.13 | تفعيل الخط الساخن للشركة | 11d | 2021-09-17 | 2021-10-01 |  |  | 107d |  | الشيخ ابراهيم; عبد اللطيف | 176h |  |
| 153 | 1.3.14 | تدريب اعضاء مجلس الإدارة | 22d | 2021-09-17 | 2021-10-18 |  |  | 96d |  | الشيخ ابراهيم; عبد اللطيف | 352h |  |
| 154 | 1.3.15 | **حصر الإدارات و الأقسام حسب متطلبات التحول و لوائح سوق المال** | 76d | 2021-09-17 | 2021-12-31 |  |  | 42d |  |  | 2856h |  |
| 155 | 1.3.15.1 | مراجع داخلي | 76d | 2021-09-17 | 2021-12-31 |  |  | 42d |  | عبد اللطيف | 608h |  |
| 156 | 1.3.15.2 | لجان الحوكمة | 76d | 2021-09-17 | 2021-12-31 |  |  | 42d |  | عبد اللطيف | 608h |  |
| 157 | 1.3.15.3 | إدارة الأمتثال | 76d | 2021-09-17 | 2021-12-31 |  |  | 42d |  | عبد اللطيف | 608h |  |
| 158 | 1.3.15.4 | ضابط الاتصال | 76d | 2021-09-17 | 2021-12-31 |  |  | 42d |  | عبد اللطيف | 608h |  |
| 159 | 1.3.15.5 | إدارة البدجت | 53d | 2021-09-17 | 2021-11-30 |  |  | 65d | finish no earlier than 2021-11-30 | عبد اللطيف | 424h |  |
| 160 | 1.3.16 | بناء قسم علاقة المساهمين /مسئول الأفصاح | 53d | 2021-09-17 | 2021-11-30 |  |  | 65d |  | مراد | 424h |  |
| 161 | 1.3.17 | الإجراءات التشغيلية لتطبيق دليل الحوكمة | 53d | 2021-09-17 | 2021-11-30 |  |  | 65d |  | عبد اللطيف | 424h |  |
| 162 | 1.3.18 | تحديد المتطلبات المهنية لوظائف كبار التنفيذيين وعمل المسار التدريبي لهم (جدارات) | 53d | 2021-09-17 | 2021-11-30 |  |  | 65d |  | عبد اللطيف | 424h |  |
| 163 | 1.3.19 | إطار حوكمة الشركة | 53d | 2021-09-17 | 2021-11-30 |  |  | 65d |  | عبد اللطيف | 424h |  |

Notes:
- 148: اعتمادها من جمعية المساهمين
